# УП_Матвих

Schedule from MS Project, 2027-02-03 to 2027-08-17, status date 2027-03-31, costs in ₽, A marks actual dates.

## Calendars

- Стандартный: Mon-Fri 09:00-13:00, 14:00-18:00; Sat-Sun off.

## Resources

| Resource | Group | Rate |
| --- | --- | --- |
| Руководитель проекта | Руководство | 900 |
| Бизнес-аналитик | Аналитика | 750 |
| Аналитик требований | Аналитика | 700 |
| Архитектор | Проектирование | 1300 |
| Дизайнер интерфейсов | Проектирование | 700 |
| ML-инженер | Разработка | 1300 |
| CV-инженер | Разработка | 1300 |
| DevOps-инженер | Разработка | 1100 |
| Тестировщик | Тестирование | 650 |
| Специалист по ИБ | Безопасность | 950 |
| Аналитик данных | Аналитика | 850 |
| Технический директор | Руководство | 1800 |
| Технический писатель | Документирование | 500 |
| Инженер по внедрению | Внедрение | 900 |
| Комплект камер и осветителей | Оборудование | 15000 |
| Лицензии на среду разметки и обучения | Оборудование | 85000 |
| Аренда GPU-серверов | Оборудование | 120000 |
| Услуги внешнего аудита качества | Оборудование | 250000 |

## Schedule

| ID | WBS | Task | Type | Duration | Start | Finish | Predecessors | Complete | Remaining | Baseline start | Baseline finish | Baseline duration | Total slack | Constraint | Resources | Work | Actual work | Cost | Baseline cost | Actual cost | Риск (сводно) |
| --- | --- | --- | --- | --- | --- | --- | --- | --- | --- | --- | --- | --- | --- | --- | --- | --- | --- | --- | --- | --- | --- |
| 1 | 1 | **Этап 1. Инициация проекта и анализ производства** |  | 14d | 2027-02-03 09:00 A | 2027-02-22 18:00 A |  | 100% |  | 2027-02-03 09:00 | 2027-02-22 18:00 | 14d |  |  |  | 300h | 300h | 258,600 | 258,600 | 258,600 |  |
| 2 | 1.1 | Утверждение концепции и устава проекта | manual | 3d | 2027-02-03 09:00 A | 2027-02-05 18:00 A |  | 100% |  | 2027-02-03 09:00 | 2027-02-05 18:00 | 3d |  |  | Руководитель проекта [50%] | 12h | 12h | 10,800 | 10,800 | 10,800 |  |
| 3 | 1.2 | Обследование производственной линии и участков контроля | manual | 5d | 2027-02-05 09:00 A | 2027-02-11 18:00 A | 2 | 100% |  | 2027-02-05 09:00 | 2027-02-11 18:00 | 5d |  |  | Бизнес-аналитик | 40h | 40h | 30,000 | 30,000 | 30,000 |  |
| 4 | 1.3 | Сбор и систематизация требований к системе | manual | 6d | 2027-02-10 09:00 A | 2027-02-17 18:00 A | 2 | 100% |  | 2027-02-10 09:00 | 2027-02-17 18:00 | 6d |  |  | Бизнес-аналитик; Аналитик требований | 96h | 96h | 69,600 | 69,600 | 69,600 |  |
| 5 | 1.4 | Изучение требований промышленной безопасности и ГОСТ | manual | 4d | 2027-02-12 09:00 A | 2027-02-17 18:00 A | 3 | 100% |  | 2027-02-12 09:00 | 2027-02-17 18:00 | 4d |  |  | Аналитик требований | 32h | 32h | 22,400 | 22,400 | 22,400 | Риск: 40% / 120000 руб. |
| 6 | 1.5 | Анализ существующих систем машинного зрения | manual | 4d | 2027-02-12 09:00 A | 2027-02-17 18:00 A | 3 | 100% |  | 2027-02-12 09:00 | 2027-02-17 18:00 | 4d |  |  | Аналитик требований | 32h | 32h | 22,400 | 22,400 | 22,400 |  |
| 7 | 1.6 | Формирование бэклога и критериев приёмки | manual | 3d | 2027-02-18 09:00 A | 2027-02-22 18:00 A | 4, 5, 6 | 100% |  | 2027-02-18 09:00 | 2027-02-22 18:00 | 3d |  |  | Бизнес-аналитик | 24h | 24h | 18,000 | 18,000 | 18,000 |  |
| 8 | 1.7 | Создание репозитория и настройка CI/CD-конвейера | manual | 3d | 2027-02-05 09:00 A | 2027-02-09 18:00 A | 2SS+2d | 100% |  | 2027-02-05 09:00 | 2027-02-09 18:00 | 3d |  |  | DevOps-инженер | 24h | 24h | 26,400 | 26,400 | 26,400 |  |
| 9 | 1.8 | Развёртывание GPU-стенда и средств разметки | manual | 5d | 2027-02-10 09:00 A | 2027-02-16 18:00 A | 8 | 100% |  | 2027-02-10 09:00 | 2027-02-16 18:00 | 5d |  |  | DevOps-инженер; Комплект камер и осветителей | 40h | 40h | 59,000 | 59,000 | 59,000 |  |
| 10 | 1.9 | Веха 1. Требования и план проекта согласованы | milestone, manual | 0d | 2027-02-22 09:00 A | 2027-02-22 09:00 A | 7, 9 | 100% |  | 2027-02-22 09:00 | 2027-02-22 09:00 | 0d |  |  | Руководитель проекта [50%] |  |  |  |  |  |  |
| 11 | 2 | **Этап 2. Проектирование системы технического зрения** |  | 22d | 2027-02-22 09:00 A | 2027-03-24 09:00 A |  | 100% |  | 2027-02-22 09:00 | 2027-03-24 09:00 | 22d |  |  |  | 435.2h | 435.2h | 462,560 | 462,560 | 462,560 |  |
| 12 | 2.1 | Разработка архитектуры системы технического зрения | manual | 6d | 2027-02-22 09:00 A | 2027-03-01 18:00 A | 10 | 100% |  | 2027-02-22 09:00 | 2027-03-01 18:00 | 6d |  |  | Архитектор | 48h | 48h | 62,400 | 62,400 | 62,400 |  |
| 13 | 2.2 | Проектирование интерфейса оператора линии | manual | 8d | 2027-02-22 09:00 A | 2027-03-03 18:00 A | 10 | 100% |  | 2027-02-22 09:00 | 2027-03-03 18:00 | 8d |  |  | Дизайнер интерфейсов | 64h | 64h | 44,800 | 44,800 | 44,800 |  |
| 14 | 2.3 | Проектирование интеграции с АСУ ТП | manual | 6d | 2027-03-03 09:00 A | 2027-03-10 18:00 A | 12 | 100% |  | 2027-03-03 09:00 | 2027-03-10 18:00 | 6d |  |  | Архитектор | 48h | 48h | 62,400 | 62,400 | 62,400 |  |
| 15 | 2.4 | Проектирование схемы БД истории дефектов | manual | 5d | 2027-03-04 09:00 A | 2027-03-10 18:00 A | 12 | 100% |  | 2027-03-04 09:00 | 2027-03-10 18:00 | 5d |  |  | Архитектор; CV-инженер [50%] | 60h | 60h | 78,000 | 78,000 | 78,000 |  |
| 16 | 2.5 | Проектирование защиты данных и доступа | manual | 5d | 2027-03-03 09:00 A | 2027-03-09 18:00 A | 12 | 100% |  | 2027-03-03 09:00 | 2027-03-09 18:00 | 5d |  |  | Специалист по ИБ | 40h | 40h | 38,000 | 38,000 | 38,000 |  |
| 17 | 2.6 | Разработка технического задания и протоколов обмена | manual | 6d | 2027-03-11 09:00 A | 2027-03-18 18:00 A | 13, 14, 15, 16 | 100% |  | 2027-03-11 09:00 | 2027-03-18 18:00 | 6d |  |  | Архитектор | 48h | 48h | 62,400 | 62,400 | 62,400 | Риск: 35% / 95000 руб. |
| 18 | 2.7 | Разработка макетов экранов оператора | manual | 6d | 2027-03-05 09:00 A | 2027-03-12 18:00 A | 13 | 100% |  | 2027-03-05 09:00 | 2027-03-12 18:00 | 6d |  |  | Дизайнер интерфейсов | 48h | 48h | 33,600 | 33,600 | 33,600 |  |
| 19 | 2.8 | Согласование макетов с заказчиком | manual | 4d | 2027-03-15 09:00 A | 2027-03-18 18:00 A | 18 | 100% |  | 2027-03-15 09:00 | 2027-03-18 18:00 | 4d |  |  | Дизайнер интерфейсов; Руководитель проекта [50%] | 48h | 48h | 36,800 | 36,800 | 36,800 |  |
| 20 | 2.9 | Рецензирование архитектурных решений | manual | 3d | 2027-03-19 09:00 A | 2027-03-23 18:00 A | 17 | 100% |  | 2027-03-19 09:00 | 2027-03-23 18:00 | 3d |  |  | Архитектор; Технический директор [30%] | 31.2h | 31.2h | 44,160 | 44,160 | 44,160 |  |
| 21 | 2.10 | Веха 2. Архитектура системы согласована | milestone, manual | 0d | 2027-03-24 09:00 A | 2027-03-24 09:00 A | 19, 20 | 100% |  | 2027-03-24 09:00 | 2027-03-24 09:00 | 0d |  |  | Руководитель проекта [50%] |  |  |  |  |  |  |
| 22 | 3 | **Этап 3. Формирование датасета и обучение модели** |  | 32d | 2027-03-24 09:00 A | 2027-05-07 09:00 |  | 8% | 29.42d | 2027-03-24 09:00 | 2027-05-07 09:00 | 32d | 0d |  |  | 979.6h | 104.27h | 1,141,140 | 1,141,140 | 135,453.33 |  |
| 23 | 3.1 | Настройка конвейера сбора и обработки изображений | manual | 8d | 2027-03-24 09:00 A | 2027-04-02 18:00 | 21 | 80% | 1.6d | 2027-03-24 09:00 | 2027-04-02 18:00 | 8d |  |  | ML-инженер [200%] | 128h | 102.4h | 166,400 | 166,400 | 133,120 | Риск: 30% / 150000 руб. |
| 24 | 3.2 | Калибровка камер и освещения | manual | 6d | 2027-04-05 09:00 A | 2027-04-12 18:00 | 23 | 1% | 5.93d | 2027-04-05 09:00 | 2027-04-12 18:00 | 6d |  |  | ML-инженер; Специалист по ИБ [50%] | 72h | 0.8h | 85,200 | 85,200 | 946.67 |  |
| 25 | 3.3 | Сбор исходного датасета изображений | manual | 6d | 2027-04-05 09:00 A | 2027-04-12 18:00 | 23 | 1% | 5.93d | 2027-04-05 09:00 | 2027-04-12 18:00 | 6d |  |  | ML-инженер | 48h | 0.53h | 62,400 | 62,400 | 693.33 |  |
| 26 | 3.4 | Разметка изображений и выделение дефектов | manual | 10d | 2027-04-12 09:00 | 2027-04-23 18:00 | 24, 25 |  |  | 2027-04-12 09:00 | 2027-04-23 18:00 | 10d |  | must start on 2027-04-12 09:00 | ML-инженер [200%] | 160h |  | 208,000 | 208,000 |  |  |
| 27 | 3.5 | Аугментация и балансировка датасета | manual | 6d | 2027-04-12 09:00 | 2027-04-19 18:00 | 25 |  |  | 2027-04-12 09:00 | 2027-04-19 18:00 | 6d |  |  | ML-инженер; CV-инженер [50%] | 72h |  | 93,600 | 93,600 |  |  |
| 28 | 3.6 | Разделение данных на обучающую и тестовую выборки | manual | 5d | 2027-04-12 09:00 | 2027-04-16 18:00 | 25 |  |  | 2027-04-12 09:00 | 2027-04-16 18:00 | 5d |  |  | ML-инженер | 40h |  | 52,000 | 52,000 |  |  |
| 29 | 3.7 | Обучение базовой модели детекции дефектов | manual | 8d | 2027-04-26 09:00 | 2027-05-05 18:00 | 26 |  |  | 2027-04-26 09:00 | 2027-05-05 18:00 | 8d |  |  | ML-инженер; CV-инженер | 128h |  | 166,400 | 166,400 |  | Риск: 45% / 180000 руб. |
| 30 | 3.8 | Валидация модели на контрольной выборке | manual | 4d | 2027-04-05 09:00 | 2027-04-08 18:00 | 23 |  |  | 2027-04-05 09:00 | 2027-04-08 18:00 | 4d |  |  | ML-инженер | 32h |  | 41,600 | 41,600 |  |  |
| 31 | 3.9 | Анализ ошибок и ложных срабатываний | manual | 6d | 2027-04-12 09:00 | 2027-04-19 18:00 | 25 |  |  | 2027-04-12 09:00 | 2027-04-19 18:00 | 6d |  |  | Аналитик данных | 48h |  | 40,800 | 40,800 |  |  |
| 32 | 3.10 | Доразметка редких видов дефектов | manual | 6d | 2027-04-05 09:00 A | 2027-04-12 18:00 | 15, 23 | 1% | 5.93d | 2027-04-05 09:00 | 2027-04-12 18:00 | 6d |  |  | ML-инженер | 48h | 0.53h | 62,400 | 62,400 | 693.33 |  |
| 33 | 3.11 | Повторное обучение модели на расширенном датасете | manual | 5d | 2027-04-21 09:00 | 2027-04-27 18:00 | 31SF+2d |  |  | 2027-04-21 09:00 | 2027-04-27 18:00 | 5d |  |  | Аналитик данных; ML-инженер [50%] | 60h |  | 60,000 | 60,000 |  |  |
| 34 | 3.12 | Квантование и оптимизация модели для инференса | manual | 7d | 2027-04-26 09:00 | 2027-05-04 18:00 | 24, 26, 27, 28, 32 |  |  | 2027-04-26 09:00 | 2027-05-04 18:00 | 7d |  | start no earlier than 2027-04-26 09:00 | Тестировщик [150%] | 84h |  | 54,600 | 54,600 |  |  |
| 35 | 3.13 | Тестирование скорости инференса | manual | 5d | 2027-04-30 09:00 | 2027-05-06 18:00 | 34FF+1d |  |  | 2027-04-30 09:00 | 2027-05-06 18:00 | 5d |  |  | Тестировщик [99%]; DevOps-инженер [50%] | 59.6h |  | 47,740 | 47,740 |  |  |
| 36 | 3.14 | Веха 3. Модель обучена и оптимизирована | milestone, manual | 0d | 2027-05-07 09:00 | 2027-05-07 09:00 | 30, 33, 34, 35 |  |  | 2027-05-07 09:00 | 2027-05-07 09:00 | 0d |  |  | Руководитель проекта [50%] |  |  |  |  |  |  |

Notes:
- 5: Риск: изменение требований промышленной безопасности в ходе проекта. Вероятность 40%, ожидаемые потери 120 000 руб. Меры: предварительное согласование регламентов со службой качества, буфер 2 дня.
- 17: Риск: несогласованность протоколов обмена с АСУ ТП. Вероятность 35%, потери 95 000 руб. Меры: еженедельный синхронизационный семинар с интеграторами.
- 23: Риск: дефицит ML-инженеров в команде. Вероятность 30%, потери 150 000 руб. Меры: буфер 3 дня, резерв из команды CV-инженеров.
- 29: Риск: переобучение модели и низкая точность на новых дефектах. Вероятность 45%, потери 180 000 руб. Меры: расширение датасета, кросс-валидация, буфер 4 дня.

| ID | WBS | Task | Type | Duration | Start | Finish | Predecessors | Baseline start | Baseline finish | Baseline duration | Total slack | Constraint | Resources | Work | Cost | Baseline cost | Риск (сводно) |
| --- | --- | --- | --- | --- | --- | --- | --- | --- | --- | --- | --- | --- | --- | --- | --- | --- | --- |
| 37 | 4 | **Этап 4. Интеграция с производственной инфраструктурой** |  | 28d | 2027-05-07 09:00 | 2027-06-16 09:00 |  | 2027-05-07 09:00 | 2027-06-16 09:00 | 28d | 0d |  |  | 467.36h | 756,168 | 756,168 |  |
| 38 | 4.1 | Разработка серверной службы обработки кадров | manual | 8d | 2027-05-07 09:00 | 2027-05-18 18:00 | 36 | 2027-05-07 09:00 | 2027-05-18 18:00 | 8d |  |  | CV-инженер [149%] | 95.36h | 123,968 | 123,968 |  |
| 39 | 4.2 | Интеграция с промышленной АСУ ТП | manual | 7d | 2027-05-19 09:00 | 2027-05-27 18:00 | 38 | 2027-05-19 09:00 | 2027-05-27 18:00 | 7d |  |  | CV-инженер | 56h | 72,800 | 72,800 |  |
| 40 | 4.3 | Интеграция с системой отбраковки | manual | 5d | 2027-05-19 09:00 | 2027-05-25 18:00 | 24, 38 | 2027-05-19 09:00 | 2027-05-25 18:00 | 5d |  |  | ML-инженер; Специалист по ИБ [50%] | 60h | 71,000 | 71,000 | Риск: 25% / 60000 руб. |
| 41 | 4.4 | Интеграция с конвейерной линией | manual | 4d | 2027-05-19 09:00 | 2027-05-24 18:00 | 30, 38 | 2027-05-19 09:00 | 2027-05-24 18:00 | 4d |  |  | DevOps-инженер | 32h | 35,200 | 35,200 |  |
| 42 | 4.5 | Интеграция с MES-системой предприятия | manual | 6d | 2027-05-20 09:00 | 2027-05-27 18:00 | 27, 38 | 2027-05-20 09:00 | 2027-05-27 18:00 | 6d |  |  | CV-инженер | 48h | 62,400 | 62,400 |  |
| 43 | 4.6 | Настройка мониторинга и журналирования | manual | 4d | 2027-05-19 09:00 | 2027-05-24 18:00 | 38 | 2027-05-19 09:00 | 2027-05-24 18:00 | 4d |  |  | DevOps-инженер | 32h | 35,200 | 35,200 |  |
| 44 | 4.7 | Проверка соответствия требованиям безопасности | manual | 5d | 2027-05-26 09:00 | 2027-06-01 18:00 | 16, 40 | 2027-05-26 09:00 | 2027-06-01 18:00 | 5d |  |  | Специалист по ИБ; Услуги внешнего аудита качества | 40h | 288,000 | 288,000 |  |
| 45 | 4.8 | Регрессионное тестирование интеграций | manual | 6d | 2027-06-02 09:00 | 2027-06-09 18:00 | 39, 40, 41, 42, 43, 44 | 2027-06-02 09:00 | 2027-06-09 18:00 | 6d |  |  | Тестировщик [150%] | 72h | 46,800 | 46,800 |  |
| 46 | 4.9 | Тестирование отказоустойчивости при обрыве связи | manual | 4d | 2027-06-10 09:00 | 2027-06-15 18:00 | 43, 45 | 2027-06-10 09:00 | 2027-06-15 18:00 | 4d |  |  | Тестировщик | 32h | 20,800 | 20,800 |  |
| 47 | 4.10 | Веха 4. Интеграция завершена | milestone, manual | 0d | 2027-06-16 09:00 | 2027-06-16 09:00 | 45, 46 | 2027-06-16 09:00 | 2027-06-16 09:00 | 0d |  |  | Руководитель проекта [50%] |  |  |  |  |
| 48 | 5 | **Этап 5. Тестирование и опытная эксплуатация** |  | 50d | 2027-05-07 09:00 | 2027-07-16 09:00 |  | 2027-05-07 09:00 | 2027-07-16 09:00 | 50d | 0d |  |  | 507.6h | 449,540 | 449,540 |  |
| 49 | 5.1 | Разработка тест-плана и тест-кейсов | manual | 5d | 2027-05-07 09:00 | 2027-05-13 18:00 | 36 | 2027-05-07 09:00 | 2027-05-13 18:00 | 5d |  |  | Тестировщик [99%]; Бизнес-аналитик [50%] | 59.6h | 40,740 | 40,740 |  |
| 50 | 5.2 | Функциональное тестирование | manual | 8d | 2027-06-10 09:00 | 2027-06-21 18:00 | 45, 49 | 2027-06-10 09:00 | 2027-06-21 18:00 | 8d |  |  | Тестировщик [200%] | 128h | 83,200 | 83,200 | Риск: 50% / 220000 руб. |
| 51 | 5.3 | Оценка удобства работы оператора | manual | 4d | 2027-06-21 09:00 | 2027-06-24 18:00 | 50 | 2027-06-21 09:00 | 2027-06-24 18:00 | 4d |  |  | Дизайнер интерфейсов | 32h | 22,400 | 22,400 |  |
| 52 | 5.4 | Проверка защищённости и прав доступа | manual | 5d | 2027-06-21 09:00 | 2027-06-25 18:00 | 44, 50 | 2027-06-21 09:00 | 2027-06-25 18:00 | 5d |  |  | Специалист по ИБ | 40h | 38,000 | 38,000 |  |
| 53 | 5.5 | Тестирование на целевом оборудовании линии | manual | 5d | 2027-06-21 09:00 | 2027-06-25 18:00 | 50 | 2027-06-21 09:00 | 2027-06-25 18:00 | 5d |  |  | Тестировщик | 40h | 26,000 | 26,000 |  |
| 54 | 5.6 | Тестирование при деградации освещения и связи | manual | 3d | 2027-06-21 09:00 | 2027-06-23 18:00 | 29, 50 | 2027-06-21 09:00 | 2027-06-23 18:00 | 3d |  |  | Тестировщик | 24h | 15,600 | 15,600 |  |
| 55 | 5.7 | Исправление выявленных дефектов системы | manual | 10d | 2027-06-28 09:00 | 2027-07-09 18:00 | 51, 52, 53, 54 | 2027-06-28 09:00 | 2027-07-09 18:00 | 10d |  | finish no later than 2027-07-14 18:00 | ML-инженер [200%] | 160h | 208,000 | 208,000 |  |
| 56 | 5.8 | Подготовка отчёта о тестировании | manual | 3d | 2027-07-12 09:00 | 2027-07-14 18:00 | 55 | 2027-07-12 09:00 | 2027-07-14 18:00 | 3d |  |  | Тестировщик | 24h | 15,600 | 15,600 |  |
| 57 | 5.9 | Веха 5. Тестирование завершено | milestone, manual | 0d | 2027-07-16 09:00 | 2027-07-16 09:00 | 56 | 2027-07-16 09:00 | 2027-07-16 09:00 | 0d |  |  | Руководитель проекта [50%] |  |  |  |  |
| 58 | 6 | **Этап 6. Внедрение и сопровождение** |  | 137d | 2027-02-08 09:00 | 2027-08-17 18:00 |  | 2027-02-08 09:00 | 2027-08-17 18:00 | 137d | 0d |  |  | 252h | 356,600 | 356,600 |  |
| 59 | 6.1 | Подготовка руководства оператора | manual | 4d | 2027-07-16 09:00 | 2027-07-21 18:00 | 57 | 2027-07-16 09:00 | 2027-07-21 18:00 | 4d |  |  | Технический писатель [50%] | 16h | 8,000 | 8,000 |  |
| 60 | 6.2 | Обучение операторов и инженеров ОТК | manual | 3d | 2027-07-22 09:00 | 2027-07-26 18:00 | 59 | 2027-07-22 09:00 | 2027-07-26 18:00 | 3d |  |  | Руководитель проекта [50%]; Бизнес-аналитик [50%] | 24h | 19,800 | 19,800 |  |
| 61 | 6.3 | Настройка продуктивной среды и резервного копирования | manual | 3d | 2027-07-16 09:00 | 2027-07-20 18:00 | 43, 57 | 2027-07-16 09:00 | 2027-07-20 18:00 | 3d |  |  | DevOps-инженер; Аренда GPU-серверов | 24h | 146,400 | 146,400 |  |
| 62 | 6.4 | Развёртывание системы на производственной линии | manual | 5d | 2027-07-16 09:00 | 2027-07-22 18:00 | 57 | 2027-07-16 09:00 | 2027-07-22 18:00 | 5d |  |  | DevOps-инженер | 40h | 44,000 | 44,000 |  |
| 63 | 6.5 | Проведение приёмочных испытаний с заказчиком | manual | 4d | 2027-07-26 09:00 | 2027-07-29 18:00 | 57, 60 | 2027-07-26 09:00 | 2027-07-29 18:00 | 4d |  | must finish on 2027-08-01 08:00 | Бизнес-аналитик; Руководитель проекта [50%] | 48h | 38,400 | 38,400 | Риск: 20% / 45000 руб. |
| 64 | 6.6 | Передача документации и исходного кода | manual | 3d | 2027-07-23 09:00 | 2027-07-27 18:00 | 59, 62 | 2027-07-23 09:00 | 2027-07-27 18:00 | 3d |  |  | Технический директор [30%] | 7.2h | 12,960 | 12,960 |  |
| 65 | 6.7 | Опытно-промышленная эксплуатация | manual | 6d | 2027-08-02 09:00 | 2027-08-09 18:00 | 63 | 2027-08-02 09:00 | 2027-08-09 18:00 | 6d |  |  | Инженер по внедрению | 48h | 43,200 | 43,200 |  |
| 66 | 6.8 | Анализ обратной связи операторов и корректировка | manual | 4d | 2027-08-09 09:00 | 2027-08-12 18:00 | 62, 63, 65 | 2027-08-09 09:00 | 2027-08-12 18:00 | 4d |  |  | Инженер по внедрению [50%]; Аналитик данных [50%] | 32h | 28,000 | 28,000 |  |
| 67 | 6.9 | Веха 6. Система введена в промышленную эксплуатацию | milestone, manual | 0d | 2027-08-16 09:00 | 2027-08-16 09:00 | 61, 64, 66 | 2027-08-16 09:00 | 2027-08-16 09:00 | 0d |  |  | Руководитель проекта [50%] |  |  |  |  |

Notes:
- 40: Риск: задержка поставки интерфейса системы отбраковки. Вероятность 25%, потери 60 000 руб. Меры: использовать резервный протокол обмена.
- 50: Риск: массовые дефекты на этапе функционального тестирования. Вероятность 50%, потери 220 000 руб. Меры: буфер 5 дней в этапе исправления дефектов.
- 63: Риск: неготовность заказчика к приёмочным испытаниям. Вероятность 20%, потери 45 000 руб. Меры: раннее согласование сценариев испытаний.

| ID | WBS | Task | Type | Duration | Start | Finish | Predecessors | Baseline start | Baseline finish | Baseline duration | Total slack | Constraint | Resources | Work | Cost | Baseline cost |
| --- | --- | --- | --- | --- | --- | --- | --- | --- | --- | --- | --- | --- | --- | --- | --- | --- |
| 68 | 6.10 | **Совещание** |  | 135.12d | 2027-02-08 09:00 | 2027-08-16 10:00 |  | 2027-02-08 09:00 | 2027-08-16 10:00 | 135.12d | 0d |  |  |  |  |  |
| 69 | 6.10.1 | Совещание 1 | manual | 1h | 2027-02-08 09:00 | 2027-02-08 10:00 |  | 2027-02-08 09:00 | 2027-02-08 10:00 | 1h |  | start no earlier than 2027-02-08 09:00 |  |  |  |  |
| 70 | 6.10.2 | Совещание 2 | manual | 1h | 2027-02-15 09:00 | 2027-02-15 10:00 |  | 2027-02-15 09:00 | 2027-02-15 10:00 | 1h |  | start no earlier than 2027-02-15 09:00 |  |  |  |  |
| 71 | 6.10.3 | Совещание 3 | manual | 1h | 2027-02-22 09:00 | 2027-02-22 10:00 |  | 2027-02-22 09:00 | 2027-02-22 10:00 | 1h |  | start no earlier than 2027-02-22 09:00 |  |  |  |  |
| 72 | 6.10.4 | Совещание 4 | manual | 1h | 2027-03-01 09:00 | 2027-03-01 10:00 |  | 2027-03-01 09:00 | 2027-03-01 10:00 | 1h |  | start no earlier than 2027-03-01 09:00 |  |  |  |  |
| 73 | 6.10.5 | Совещание 5 | manual | 1h | 2027-03-08 09:00 | 2027-03-08 10:00 |  | 2027-03-08 09:00 | 2027-03-08 10:00 | 1h |  | start no earlier than 2027-03-08 09:00 |  |  |  |  |
| 74 | 6.10.6 | Совещание 6 | manual | 1h | 2027-03-15 09:00 | 2027-03-15 10:00 |  | 2027-03-15 09:00 | 2027-03-15 10:00 | 1h |  | start no earlier than 2027-03-15 09:00 |  |  |  |  |
| 75 | 6.10.7 | Совещание 7 | manual | 1h | 2027-03-22 09:00 | 2027-03-22 10:00 |  | 2027-03-22 09:00 | 2027-03-22 10:00 | 1h |  | start no earlier than 2027-03-22 09:00 |  |  |  |  |
| 76 | 6.10.8 | Совещание 8 | manual | 1h | 2027-03-29 09:00 | 2027-03-29 10:00 |  | 2027-03-29 09:00 | 2027-03-29 10:00 | 1h |  | start no earlier than 2027-03-29 09:00 |  |  |  |  |
| 77 | 6.10.9 | Совещание 9 | manual | 1h | 2027-04-05 09:00 | 2027-04-05 10:00 |  | 2027-04-05 09:00 | 2027-04-05 10:00 | 1h |  | start no earlier than 2027-04-05 09:00 |  |  |  |  |
| 78 | 6.10.10 | Совещание 10 | manual | 1h | 2027-04-12 09:00 | 2027-04-12 10:00 |  | 2027-04-12 09:00 | 2027-04-12 10:00 | 1h |  | start no earlier than 2027-04-12 09:00 |  |  |  |  |
| 79 | 6.10.11 | Совещание 11 | manual | 1h | 2027-04-19 09:00 | 2027-04-19 10:00 |  | 2027-04-19 09:00 | 2027-04-19 10:00 | 1h |  | start no earlier than 2027-04-19 09:00 |  |  |  |  |
| 80 | 6.10.12 | Совещание 12 | manual | 1h | 2027-04-26 09:00 | 2027-04-26 10:00 |  | 2027-04-26 09:00 | 2027-04-26 10:00 | 1h |  | start no earlier than 2027-04-26 09:00 |  |  |  |  |
| 81 | 6.10.13 | Совещание 13 | manual | 1h | 2027-05-03 09:00 | 2027-05-03 10:00 |  | 2027-05-03 09:00 | 2027-05-03 10:00 | 1h |  | start no earlier than 2027-05-03 09:00 |  |  |  |  |
| 82 | 6.10.14 | Совещание 14 | manual | 1h | 2027-05-10 09:00 | 2027-05-10 10:00 |  | 2027-05-10 09:00 | 2027-05-10 10:00 | 1h |  | start no earlier than 2027-05-10 09:00 |  |  |  |  |
| 83 | 6.10.15 | Совещание 15 | manual | 1h | 2027-05-17 09:00 | 2027-05-17 10:00 |  | 2027-05-17 09:00 | 2027-05-17 10:00 | 1h |  | start no earlier than 2027-05-17 09:00 |  |  |  |  |
| 84 | 6.10.16 | Совещание 16 | manual | 1h | 2027-05-24 09:00 | 2027-05-24 10:00 |  | 2027-05-24 09:00 | 2027-05-24 10:00 | 1h |  | start no earlier than 2027-05-24 09:00 |  |  |  |  |
| 85 | 6.10.17 | Совещание 17 | manual | 1h | 2027-05-31 09:00 | 2027-05-31 10:00 |  | 2027-05-31 09:00 | 2027-05-31 10:00 | 1h |  | start no earlier than 2027-05-31 09:00 |  |  |  |  |
| 86 | 6.10.18 | Совещание 18 | manual | 1h | 2027-06-07 09:00 | 2027-06-07 10:00 |  | 2027-06-07 09:00 | 2027-06-07 10:00 | 1h |  | start no earlier than 2027-06-07 09:00 |  |  |  |  |
| 87 | 6.10.19 | Совещание 19 | manual | 1h | 2027-06-14 09:00 | 2027-06-14 10:00 |  | 2027-06-14 09:00 | 2027-06-14 10:00 | 1h |  | start no earlier than 2027-06-14 09:00 |  |  |  |  |
| 88 | 6.10.20 | Совещание 20 | manual | 1h | 2027-06-21 09:00 | 2027-06-21 10:00 |  | 2027-06-21 09:00 | 2027-06-21 10:00 | 1h |  | start no earlier than 2027-06-21 09:00 |  |  |  |  |
| 89 | 6.10.21 | Совещание 21 | manual | 1h | 2027-06-28 09:00 | 2027-06-28 10:00 |  | 2027-06-28 09:00 | 2027-06-28 10:00 | 1h |  | start no earlier than 2027-06-28 09:00 |  |  |  |  |
| 90 | 6.10.22 | Совещание 22 | manual | 1h | 2027-07-05 09:00 | 2027-07-05 10:00 |  | 2027-07-05 09:00 | 2027-07-05 10:00 | 1h |  | start no earlier than 2027-07-05 09:00 |  |  |  |  |
| 91 | 6.10.23 | Совещание 23 | manual | 1h | 2027-07-12 09:00 | 2027-07-12 10:00 |  | 2027-07-12 09:00 | 2027-07-12 10:00 | 1h |  | start no earlier than 2027-07-12 09:00 |  |  |  |  |
| 92 | 6.10.24 | Совещание 24 | manual | 1h | 2027-07-19 09:00 | 2027-07-19 10:00 |  | 2027-07-19 09:00 | 2027-07-19 10:00 | 1h |  | start no earlier than 2027-07-19 09:00 |  |  |  |  |
| 93 | 6.10.25 | Совещание 25 | manual | 1h | 2027-07-26 09:00 | 2027-07-26 10:00 |  | 2027-07-26 09:00 | 2027-07-26 10:00 | 1h |  | start no earlier than 2027-07-26 09:00 |  |  |  |  |
| 94 | 6.10.26 | Совещание 26 | manual | 1h | 2027-08-02 09:00 | 2027-08-02 10:00 |  | 2027-08-02 09:00 | 2027-08-02 10:00 | 1h |  | start no earlier than 2027-08-02 09:00 |  |  |  |  |
| 95 | 6.10.27 | Совещание 27 | manual | 1h | 2027-08-09 09:00 | 2027-08-09 10:00 |  | 2027-08-09 09:00 | 2027-08-09 10:00 | 1h |  | start no earlier than 2027-08-09 09:00 |  |  |  |  |
| 96 | 6.10.28 | Совещание 28 | manual | 1h | 2027-08-16 09:00 | 2027-08-16 10:00 |  | 2027-08-16 09:00 | 2027-08-16 10:00 | 1h |  | start no earlier than 2027-08-16 09:00 |  |  |  |  |
| 97 | 6.11 | Закрытие проекта и архивирование | manual | 2d | 2027-08-16 09:00 | 2027-08-17 18:00 | 67 | 2027-08-16 09:00 | 2027-08-17 18:00 | 2d |  |  | Руководитель проекта [50%]; Технический директор [30%] | 12.8h | 15,840 | 15,840 |
