# УП_Шистерин

Schedule from MS Project, 2027-02-03 to 2027-08-17, status date 2027-04-01, costs in ₽.

## Calendars

- Стандартный: Mon-Fri 09:00-13:00, 14:00-18:00; Sat-Sun off.

## Resources

| Resource | Group | Rate |
| --- | --- | --- |
| Руководитель проекта | Руководство | 900 |
| Бизнес-аналитик | Аналитика | 750 |
| Аналитик требований | Аналитика | 700 |
| Архитектор | Проектирование | 1300 |
| UX/UI-дизайнер | Проектирование | 700 |
| Мобильный разработчик | Разработка | 1000 |
| Бэкенд-разработчик | Разработка | 1000 |
| DevOps-инженер | Разработка | 1100 |
| Тестировщик | Тестирование | 650 |
| Специалист по ИБ | Безопасность | 950 |
| Аналитик данных | Аналитика | 850 |
| Технический директор | Руководство | 1800 |
| Технический писатель | Документирование | 500 |
| Маркетолог | Продвижение | 600 |
| Комплект тестовых устройств | Оборудование | 15000 |
| Лицензии на средства разработки | Оборудование | 85000 |
| Услуги облачной инфраструктуры | Оборудование | 120000 |
| Услуги внешнего аудита ИБ | Оборудование | 250000 |

## Schedule

| ID | WBS | Task | Type | Duration | Start | Finish | Predecessors | Baseline start | Baseline finish | Baseline duration | Total slack | Free slack | Constraint | Resources | Work | Cost | Baseline cost | Риск (сводно) |
| --- | --- | --- | --- | --- | --- | --- | --- | --- | --- | --- | --- | --- | --- | --- | --- | --- | --- | --- |
| 1 | 1 | **Этап 1. Инициализация проекта и анализ требований** |  | 15d | 2027-02-03 09:00 | 2027-02-23 18:00 |  | 2027-02-03 09:00 | 2027-02-23 13:00 | 14.5d | -2d | 0d |  |  | 300h | 258,600 | 259,200 |  |
| 2 | 1.1 | Утверждение концепции и устав проекта |  | 3d | 2027-02-03 09:00 | 2027-02-05 18:00 |  | 2027-02-03 09:00 | 2027-02-05 18:00 | 3d | -2d | 0d |  | Руководитель проекта [50%] | 12h | 10,800 | 11,400 |  |
| 3 | 1.2 | Анализ бизнес-процессов интернет-банка |  | 5d | 2027-02-08 09:00 | 2027-02-12 18:00 | 2 | 2027-02-05 14:00 | 2027-02-12 13:00 | 5d | -2d | 0d |  | Бизнес-аналитик | 40h | 30,000 | 30,000 |  |
| 4 | 1.3 | Сбор и систематизация требований заказчика |  | 6d | 2027-02-08 09:00 | 2027-02-15 18:00 | 2 | 2027-02-10 14:00 | 2027-02-18 13:00 | 6d | 1d |  |  | Бизнес-аналитик; Аналитик требований | 96h | 69,600 | 69,600 |  |
| 5 | 1.4 | Изучение нормативных требований (152-ФЗ, ГОСТ Р 56920) |  | 4d | 2027-02-15 09:00 | 2027-02-18 18:00 | 3 | 2027-02-12 14:00 | 2027-02-18 13:00 | 4d | -2d | 0d |  | Аналитик требований | 32h | 22,400 | 22,400 | Риск: 40% / 120000 руб. |
| 6 | 1.5 | Анализ конкурентных мобильных банков |  | 4d | 2027-02-15 09:00 | 2027-02-18 18:00 | 3 | 2027-02-12 14:00 | 2027-02-18 13:00 | 4d | -2d | 0d |  | Аналитик требований | 32h | 22,400 | 22,400 |  |
| 7 | 1.6 | Формирование бэклога и критериев приёмки |  | 3d | 2027-02-19 09:00 | 2027-02-23 18:00 | 4, 5, 6 | 2027-02-18 14:00 | 2027-02-23 13:00 | 3d | -2d | 0d |  | Бизнес-аналитик | 24h | 18,000 | 18,000 |  |
| 8 | 1.7 | Создание репозитория и настройка CI/CD-конвейера |  | 3d | 2027-02-05 09:00 | 2027-02-09 18:00 | 2SS+2d | 2027-02-05 09:00 | 2027-02-09 18:00 | 3d | 3d | 0d |  | DevOps-инженер | 24h | 26,400 | 26,400 |  |
| 9 | 1.8 | Развёртывание тестового стенда и средств автоматизации |  | 5d | 2027-02-10 09:00 | 2027-02-16 18:00 | 8 | 2027-02-10 09:00 | 2027-02-16 18:00 | 5d | 3d |  |  | DevOps-инженер; Комплект тестовых устройств | 40h | 59,000 | 59,000 |  |
| 10 | 1.9 | Веха 1. Согласование требований и плана проекта | milestone | 0d | 2027-02-23 18:00 | 2027-02-23 18:00 | 7, 9 | 2027-02-22 09:00 | 2027-02-22 09:00 | 0d | -2d | 0d |  | Руководитель проекта [50%] |  |  |  |  |
| 11 | 2 | **Этап 2. Проектирование мобильного приложения** |  | 21d | 2027-02-24 09:00 | 2027-03-24 18:00 |  | 2027-02-22 09:00 | 2027-03-24 14:00 | 22.5d | -2d | 0d |  |  | 435.2h | 456,560 | 457,360 |  |
| 12 | 2.1 | Разработка целевой архитектуры мобильного приложения |  | 6d | 2027-02-24 09:00 | 2027-03-03 18:00 | 10 | 2027-02-22 09:00 | 2027-03-01 18:00 | 6d | -2d | 0d |  | Архитектор | 48h | 62,400 | 62,400 |  |
| 13 | 2.2 | Проектирование UX/UI мобильного интерфейса |  | 8d | 2027-02-24 09:00 | 2027-03-05 18:00 | 10 | 2027-02-22 09:00 | 2027-03-03 18:00 | 8d | 1d | 0d |  | UX/UI-дизайнер | 64h | 44,800 | 44,800 |  |
| 14 | 2.3 | Проектирование интеграционного слоя с API банка |  | 6d | 2027-03-04 09:00 | 2027-03-11 18:00 | 12 | 2027-03-03 14:00 | 2027-03-11 13:00 | 6d | -2d | 0d |  | Архитектор | 48h | 62,400 | 62,400 |  |
| 15 | 2.4 | Проектирование схемы БД офлайн-кэша |  | 5d | 2027-03-04 09:00 | 2027-03-10 18:00 | 12 | 2027-03-04 14:00 | 2027-03-11 13:00 | 5d | -1d | 0d |  | Архитектор; Бэкенд-разработчик [50%] | 60h | 72,000 | 72,000 |  |
| 16 | 2.5 | Проектирование модели безопасности и аутентификации |  | 5d | 2027-03-04 09:00 | 2027-03-10 18:00 | 12 | 2027-03-03 14:00 | 2027-03-10 13:00 | 5d | -1d | 0d |  | Специалист по ИБ | 40h | 38,000 | 38,000 |  |
| 17 | 2.6 | Разработка технического задания и API-контрактов |  | 6d | 2027-03-12 09:00 | 2027-03-19 18:00 | 13, 14, 15, 16 | 2027-03-11 14:00 | 2027-03-19 13:00 | 6d | -2d | 0d |  | Архитектор | 48h | 62,400 | 62,400 | Риск: 35% / 95000 руб. |
| 18 | 2.7 | Разработка дизайн-макетов ключевых экранов |  | 6d | 2027-03-08 09:00 | 2027-03-15 18:00 | 13 | 2027-03-05 14:00 | 2027-03-15 13:00 | 6d | 1d | 0d |  | UX/UI-дизайнер | 48h | 33,600 | 33,600 |  |
| 19 | 2.8 | Согласование дизайн-макетов с заказчиком |  | 4d | 2027-03-16 09:00 | 2027-03-19 18:00 | 18 | 2027-03-15 09:00 | 2027-03-18 18:00 | 4d | 1d |  |  | UX/UI-дизайнер; Руководитель проекта [50%] | 48h | 36,800 | 37,600 |  |
| 20 | 2.9 | Рецензирование архитектурных решений |  | 3d | 2027-03-22 09:00 | 2027-03-24 18:00 | 17 | 2027-03-19 14:00 | 2027-03-24 13:00 | 3d | -2d | 0d |  | Архитектор; Технический директор [30%] | 31.2h | 44,160 | 44,160 |  |
| 21 | 2.10 | Веха 2. Архитектура мобильного приложения согласована | milestone | 0d | 2027-03-24 18:00 | 2027-03-24 18:00 | 19, 20 | 2027-03-24 14:00 | 2027-03-24 14:00 | 0d | -2d | 0d |  | Руководитель проекта [50%] |  |  |  |  |
| 22 | 3 | **Этап 3. Разработка функционального ядра** |  | 30d | 2027-03-25 09:00 | 2027-05-05 18:00 |  | 2027-03-24 14:00 | 2027-05-07 14:00 | 32d | -2d | 0d |  |  | 979.6h | 923,940 | 917,760 |  |
| 23 | 3.1 | Разработка каркаса приложения и навигации |  | 8d | 2027-03-25 09:00 | 2027-04-05 18:00 | 21 | 2027-03-24 14:00 | 2027-04-05 13:00 | 8d | -2d | 0d |  | Мобильный разработчик [200%] | 128h | 128,000 | 128,000 | Риск: 30% / 150000 руб. |
| 24 | 3.2 | Реализация экрана аутентификации (PIN, биометрия) |  | 6d | 2027-04-06 09:00 | 2027-04-13 18:00 | 23 | 2027-04-05 09:00 | 2027-04-12 18:00 | 6d | -2d | 0d |  | Мобильный разработчик; Специалист по ИБ [50%] | 72h | 70,800 | 70,800 |  |
| 25 | 3.3 | Реализация главного экрана и списка операций |  | 6d | 2027-04-06 09:00 | 2027-04-13 18:00 | 23 | 2027-04-05 09:00 | 2027-04-12 18:00 | 6d | -2d | 0d |  | Мобильный разработчик | 48h | 48,000 | 48,000 |  |
| 26 | 3.4 | Реализация экрана платежей и переводов |  | 10d | 2027-04-12 09:00 | 2027-04-23 18:00 | 24, 25 | 2027-04-12 09:00 | 2027-04-23 18:00 | 10d | -2d | 0d | must start on 2027-04-12 09:00 | Мобильный разработчик [200%] | 160h | 160,000 | 160,000 |  |
| 27 | 3.5 | Реализация чатов с поддержкой банка |  | 6d | 2027-04-14 09:00 | 2027-04-21 18:00 | 25 | 2027-04-12 09:00 | 2027-04-19 18:00 | 6d | 3d | 2d |  | Мобильный разработчик; Бэкенд-разработчик [50%] | 72h | 72,000 | 72,000 |  |
| 28 | 3.6 | Реализация витрины продуктов и вкладов |  | 5d | 2027-04-14 09:00 | 2027-04-20 18:00 | 25 | 2027-04-12 09:00 | 2027-04-16 18:00 | 5d | 4d | 3d |  | Мобильный разработчик | 40h | 40,000 | 40,000 |  |
| 29 | 3.7 | Разработка офлайн-режима и механизма синхронизации |  | 8d | 2027-04-26 09:00 | 2027-05-05 18:00 | 26 | 2027-04-26 09:00 | 2027-05-05 18:00 | 8d | 35d | 32d |  | Мобильный разработчик; Бэкенд-разработчик | 128h | 128,000 | 128,000 | Риск: 45% / 180000 руб. |
| 30 | 3.8 | Интеграция с push-уведомлениями |  | 4d | 2027-04-06 09:00 | 2027-04-09 18:00 | 23 | 2027-04-05 09:00 | 2027-04-08 18:00 | 4d | 19d | 18d |  | Мобильный разработчик | 32h | 32,000 | 32,000 |  |
| 31 | 3.9 | Реализация модуля аналитики и персонализации |  | 6d | 2027-04-14 09:00 | 2027-04-21 18:00 | 25 | 2027-04-12 09:00 | 2027-04-19 18:00 | 6d | 6d | 0d |  | Аналитик данных | 48h | 40,800 | 40,800 |  |
| 32 | 3.10 | Реализация офлайн-кэша на стороне клиента |  | 6d | 2027-04-06 09:00 | 2027-04-13 18:00 | 15, 23 | 2027-04-05 09:00 | 2027-04-12 18:00 | 6d | 9d | 8d |  | Мобильный разработчик | 48h | 48,000 | 48,000 |  |
| 33 | 3.11 | Реализация аналитических дашбордов |  | 5d | 2027-04-22 09:00 | 2027-04-28 18:00 | 31SF+2d | 2027-04-21 14:00 | 2027-04-28 13:00 | 5d | 6d | 5d |  | Аналитик данных; Мобильный разработчик [50%] | 60h | 54,000 | 54,000 |  |
| 34 | 3.12 | Написание unit-тестов (целевое покрытие 80%) |  | 7d | 2027-04-26 09:00 | 2027-05-04 18:00 | 24, 26, 27, 28, 32 | 2027-04-26 09:00 | 2027-05-04 18:00 | 7d | 1d | 0d | start no earlier than 2027-04-26 09:00 | Тестировщик [150%] | 84h | 54,600 | 50,400 |  |
| 35 | 3.13 | Нагрузочное тестирование API банка |  | 5d | 2027-04-29 09:00 | 2027-05-05 18:00 | 34FF+1d | 2027-04-30 14:00 | 2027-05-07 13:00 | 5d | 1d | 0d |  | Тестировщик [99%]; DevOps-инженер [50%] | 59.6h | 47,740 | 45,760 |  |
| 36 | 3.14 | Веха 3. Функциональное ядро разработано | milestone | 0d | 2027-05-05 18:00 | 2027-05-05 18:00 | 30, 33, 34, 35 | 2027-05-07 14:00 | 2027-05-07 14:00 | 0d | 1d | 0d |  | Руководитель проекта [50%] |  |  |  |  |

Notes:
- 5: Риск: изменение требований 152-ФЗ в ходе проекта. Вероятность 40%, ожидаемые потери 120 000 руб. Меры: предварительное согласование регламентов со службой ИБ, буфер 2 дня.
- 17: Риск: несогласованность API-контрактов с банковской интеграцией. Вероятность 35%, потери 95 000 руб. Меры: еженедельный синхронизационный семинар с интеграторами.
- 23: Риск: дефицит мобильных разработчиков в команде. Вероятность 30%, потери 150 000 руб. Меры: буфер 3 дня, резерв из команды backend-разработки.
- 29: Риск: нестабильная работа офлайн-режима при потере связи. Вероятность 45%, потери 180 000 руб. Меры: тестирование на реальных устройствах, буфер 4 дня.

| ID | WBS | Task | Type | Duration | Start | Finish | Predecessors | Baseline start | Baseline finish | Baseline duration | Total slack | Free slack | Constraint | Resources | Work | Cost | Baseline cost | Риск (сводно) |
| --- | --- | --- | --- | --- | --- | --- | --- | --- | --- | --- | --- | --- | --- | --- | --- | --- | --- | --- |
| 37 | 4 | **Этап 4. Интеграция с банковскими сервисами** |  | 28d | 2027-05-06 09:00 | 2027-06-14 18:00 |  | 2027-05-07 14:00 | 2027-06-16 14:00 | 28d | 1d |  |  |  | 467.36h | 684,360 | 679,160 |  |
| 38 | 4.1 | Разработка клиента REST API интернет-банка |  | 8d | 2027-05-06 09:00 | 2027-05-17 18:00 | 36 | 2027-05-07 14:00 | 2027-05-19 13:00 | 8d | 1d | 0d |  | Бэкенд-разработчик [149%] | 95.36h | 95,360 | 95,360 |  |
| 39 | 4.2 | Интеграция с платёжным шлюзом |  | 7d | 2027-05-18 09:00 | 2027-05-26 18:00 | 38 | 2027-05-19 14:00 | 2027-05-28 13:00 | 7d | 4d | 3d |  | Бэкенд-разработчик | 56h | 56,000 | 56,000 |  |
| 40 | 4.3 | Интеграция с системой биометрической аутентификации |  | 5d | 2027-05-18 09:00 | 2027-05-24 18:00 | 24, 38 | 2027-05-19 14:00 | 2027-05-26 13:00 | 5d | 1d | 0d |  | Мобильный разработчик; Специалист по ИБ [50%] | 60h | 59,000 | 59,000 | Риск: 25% / 60000 руб. |
| 41 | 4.4 | Интеграция с push-сервисом банка |  | 4d | 2027-05-18 09:00 | 2027-05-21 18:00 | 30, 38 | 2027-05-19 14:00 | 2027-05-25 13:00 | 4d | 7d | 6d |  | DevOps-инженер | 32h | 35,200 | 35,200 |  |
| 42 | 4.5 | Интеграция с CRM и системой чатов |  | 6d | 2027-05-18 09:00 | 2027-05-25 18:00 | 27, 38 | 2027-05-19 14:00 | 2027-05-27 13:00 | 6d | 5d | 4d |  | Бэкенд-разработчик | 48h | 48,000 | 48,000 |  |
| 43 | 4.6 | Настройка мониторинга и логирования (Sentry) |  | 4d | 2027-05-18 09:00 | 2027-05-21 18:00 | 38 | 2027-05-19 14:00 | 2027-05-25 13:00 | 4d | 7d | 6d |  | DevOps-инженер | 32h | 35,200 | 35,200 |  |
| 44 | 4.7 | Проверка соответствия требованиям 152-ФЗ |  | 5d | 2027-05-25 09:00 | 2027-05-31 18:00 | 16, 40 | 2027-05-26 14:00 | 2027-06-02 13:00 | 5d | 1d | 0d |  | Специалист по ИБ; Услуги внешнего аудита ИБ | 40h | 288,000 | 288,000 |  |
| 45 | 4.8 | Регрессионное тестирование интеграций |  | 6d | 2027-06-01 09:00 | 2027-06-08 18:00 | 39, 40, 41, 42, 43, 44 | 2027-06-02 14:00 | 2027-06-10 13:00 | 6d | 1d | 0d |  | Тестировщик [150%] | 72h | 46,800 | 43,200 |  |
| 46 | 4.9 | Тестирование отказоустойчивости каналов связи |  | 4d | 2027-06-09 09:00 | 2027-06-14 18:00 | 43, 45 | 2027-06-10 14:00 | 2027-06-16 13:00 | 4d | 46d | 0d |  | Тестировщик | 32h | 20,800 | 19,200 |  |
| 47 | 4.10 | Веха 4. Интеграционные работы завершены | milestone | 0d | 2027-06-14 18:00 | 2027-06-14 18:00 | 45, 46 | 2027-06-16 14:00 | 2027-06-16 14:00 | 0d | 46d |  |  | Руководитель проекта [50%] |  |  |  |  |
| 48 | 5 | **Этап 5. Тестирование и обеспечение качества** |  | 50d | 2027-05-06 09:00 | 2027-07-14 18:00 |  | 2027-05-07 14:00 | 2027-07-16 14:00 | 50d | 1d |  |  |  | 507.6h | 401,540 | 388,760 |  |
| 49 | 5.1 | Разработка тест-плана и тест-кейсов |  | 5d | 2027-05-06 09:00 | 2027-05-12 18:00 | 36 | 2027-05-07 14:00 | 2027-05-14 13:00 | 5d | 20d | 19d |  | Тестировщик [99%]; Бизнес-аналитик [50%] | 59.6h | 40,740 | 38,760 |  |
| 50 | 5.2 | Функциональное тестирование |  | 8d | 2027-06-09 09:00 | 2027-06-18 18:00 | 45, 49 | 2027-06-10 14:00 | 2027-06-22 13:00 | 8d | 1d | 0d |  | Тестировщик [200%] | 128h | 83,200 | 76,800 | Риск: 50% / 220000 руб. |
| 51 | 5.3 | Тестирование удобства использования (UX) |  | 4d | 2027-06-21 09:00 | 2027-06-24 18:00 | 50 | 2027-06-21 09:00 | 2027-06-24 18:00 | 4d | 2d | 1d |  | UX/UI-дизайнер | 32h | 22,400 | 22,400 |  |
| 52 | 5.4 | Тестирование защищённости (pentest) |  | 5d | 2027-06-21 09:00 | 2027-06-25 18:00 | 44, 50 | 2027-06-21 09:00 | 2027-06-25 18:00 | 5d | 1d | 0d |  | Специалист по ИБ | 40h | 38,000 | 38,000 |  |
| 53 | 5.5 | Тестирование совместимости с устройствами и ОС |  | 5d | 2027-06-21 09:00 | 2027-06-25 18:00 | 50 | 2027-06-21 09:00 | 2027-06-25 18:00 | 5d | 1d | 0d |  | Тестировщик | 40h | 26,000 | 24,000 |  |
| 54 | 5.6 | Тестирование офлайн-режима при потере связи |  | 3d | 2027-06-21 09:00 | 2027-06-23 18:00 | 29, 50 | 2027-06-21 09:00 | 2027-06-23 18:00 | 3d | 3d | 2d |  | Тестировщик | 24h | 15,600 | 14,400 |  |
| 55 | 5.7 | Исправление выявленных дефектов |  | 10d | 2027-06-28 09:00 | 2027-07-09 18:00 | 51, 52, 53, 54 | 2027-06-28 09:00 | 2027-07-09 18:00 | 10d | 1d | 0d | finish no later than 2027-07-14 18:00 | Мобильный разработчик [200%] | 160h | 160,000 | 160,000 |  |
| 56 | 5.8 | Подготовка отчёта о тестировании |  | 3d | 2027-07-12 09:00 | 2027-07-14 18:00 | 55 | 2027-07-12 09:00 | 2027-07-14 18:00 | 3d | 1d | 0d |  | Тестировщик | 24h | 15,600 | 14,400 |  |
| 57 | 5.9 | Веха 5. Тестирование завершено | milestone | 0d | 2027-07-14 18:00 | 2027-07-14 18:00 | 56 | 2027-07-16 14:00 | 2027-07-16 14:00 | 0d | 1d | 0d |  | Руководитель проекта [50%] |  |  |  |  |
| 58 | 6 | **Этап 6. Подготовка к эксплуатации и выпуск** |  | 137d | 2027-02-08 09:00 | 2027-08-17 18:00 |  | 2027-02-08 09:00 | 2027-08-17 18:00 | 137d | 0d |  |  |  | 406h | 481,600 | 339,200 |  |
| 59 | 6.1 | Подготовка руководства пользователя |  | 4d | 2027-07-15 09:00 | 2027-07-20 18:00 | 57 | 2027-07-16 14:00 | 2027-07-22 13:00 | 4d | 1d | 0d |  | Технический писатель [50%] | 16h | 8,000 | 8,000 |  |
| 60 | 6.2 | Обучение сотрудников поддержки |  | 3d | 2027-07-21 09:00 | 2027-07-23 18:00 | 59 | 2027-07-22 14:00 | 2027-07-27 13:00 | 3d | 1d |  |  | Руководитель проекта [50%]; Бизнес-аналитик [50%] | 24h | 19,800 | 20,400 |  |
| 61 | 6.3 | Настройка мониторинга продуктивной среды |  | 3d | 2027-07-15 09:00 | 2027-07-19 18:00 | 43, 57 | 2027-07-16 14:00 | 2027-07-21 13:00 | 3d | 19d |  |  | DevOps-инженер; Услуги облачной инфраструктуры | 24h | 146,400 | 146,400 |  |
| 62 | 6.4 | Публикация в App Store и Google Play |  | 5d | 2027-07-15 09:00 | 2027-07-21 18:00 | 57 | 2027-07-16 14:00 | 2027-07-23 13:00 | 5d | 13d | 0d |  | DevOps-инженер | 40h | 44,000 | 44,000 |  |
| 63 | 6.5 | Проведение приёмочных испытаний с заказчиком |  | 4d | 2027-07-27 09:00 | 2027-08-01 08:00 | 57, 60 | 2027-07-26 09:00 | 2027-07-29 18:00 | 4d | 0d |  | must finish on 2027-08-01 08:00 | Бизнес-аналитик; Руководитель проекта [50%] | 48h | 38,400 | 39,200 | Риск: 20% / 45000 руб. |
| 64 | 6.6 | Передача документации и исходного кода |  | 3d | 2027-07-22 09:00 | 2027-07-26 18:00 | 59, 62 | 2027-07-23 14:00 | 2027-07-28 13:00 | 3d | 14d |  |  | Технический директор [30%] | 7.2h | 12,960 | 12,960 |  |
| 65 | 6.7 | Запуск рекламной кампании |  | 6d | 2027-08-02 09:00 | 2027-08-09 18:00 | 63 | 2027-08-02 09:00 | 2027-08-09 18:00 | 6d | 0d |  |  | Маркетолог | 48h | 28,800 | 28,800 |  |
| 66 | 6.8 | Анализ первых отзывов и корректировка |  | 4d | 2027-08-10 09:00 | 2027-08-13 18:00 | 62, 63, 65 | 2027-08-09 09:00 | 2027-08-12 18:00 | 4d | 0d |  |  | Маркетолог [50%]; Аналитик данных [50%] | 32h | 23,200 | 23,200 |  |
| 67 | 6.9 | Веха 6. Релиз мобильного приложения выполнен | milestone | 0d | 2027-08-13 18:00 | 2027-08-13 18:00 | 61, 64, 66 | 2027-08-16 09:00 | 2027-08-16 09:00 | 0d | 0d |  |  | Руководитель проекта [50%] |  |  |  |  |

Notes:
- 40: Риск: задержка поставки SDK биометрической аутентификации. Вероятность 25%, потери 60 000 руб. Меры: использовать резервный SDK.
- 50: Риск: массовые дефекты на этапе функционального тестирования. Вероятность 50%, потери 220 000 руб. Меры: буфер 5 дней в этапе исправления дефектов.
- 63: Риск: неготовность заказчика к приёмочным испытаниям. Вероятность 20%, потери 45 000 руб. Меры: раннее согласование сценариев испытаний.

| ID | WBS | Task | Duration | Start | Finish | Predecessors | Baseline start | Baseline finish | Baseline duration | Total slack | Constraint | Resources | Work | Cost | Baseline cost |
| --- | --- | --- | --- | --- | --- | --- | --- | --- | --- | --- | --- | --- | --- | --- | --- |
| 68 | 6.10 | **Совещание** | 135.12d | 2027-02-08 09:00 | 2027-08-16 10:00 |  | 2027-02-08 09:00 | 2027-08-16 10:00 | 135.12d | 1.88d |  |  | 154h | 144,200 |  |
| 69 | 6.10.1 | Совещание 1 | 1h | 2027-02-08 09:00 | 2027-02-08 10:00 |  | 2027-02-08 09:00 | 2027-02-08 10:00 | 1h | 136.88d | start no earlier than 2027-02-08 09:00 | Руководитель проекта [50%]; Бизнес-аналитик; Архитектор; Мобильный разработчик; Бэкенд-разработчик; Тестировщик | 5.5h | 5,150 |  |
| 70 | 6.10.2 | Совещание 2 | 1h | 2027-02-15 09:00 | 2027-02-15 10:00 |  | 2027-02-15 09:00 | 2027-02-15 10:00 | 1h | 131.88d | start no earlier than 2027-02-15 09:00 | Руководитель проекта [50%]; Бизнес-аналитик; Архитектор; Мобильный разработчик; Бэкенд-разработчик; Тестировщик | 5.5h | 5,150 |  |
| 71 | 6.10.3 | Совещание 3 | 1h | 2027-02-22 09:00 | 2027-02-22 10:00 |  | 2027-02-22 09:00 | 2027-02-22 10:00 | 1h | 126.88d | start no earlier than 2027-02-22 09:00 | Руководитель проекта [50%]; Бизнес-аналитик; Архитектор; Мобильный разработчик; Бэкенд-разработчик; Тестировщик | 5.5h | 5,150 |  |
| 72 | 6.10.4 | Совещание 4 | 1h | 2027-03-01 09:00 | 2027-03-01 10:00 |  | 2027-03-01 09:00 | 2027-03-01 10:00 | 1h | 121.88d | start no earlier than 2027-03-01 09:00 | Руководитель проекта [50%]; Бизнес-аналитик; Архитектор; Мобильный разработчик; Бэкенд-разработчик; Тестировщик | 5.5h | 5,150 |  |
| 73 | 6.10.5 | Совещание 5 | 1h | 2027-03-08 09:00 | 2027-03-08 10:00 |  | 2027-03-08 09:00 | 2027-03-08 10:00 | 1h | 116.88d | start no earlier than 2027-03-08 09:00 | Руководитель проекта [50%]; Бизнес-аналитик; Архитектор; Мобильный разработчик; Бэкенд-разработчик; Тестировщик | 5.5h | 5,150 |  |
| 74 | 6.10.6 | Совещание 6 | 1h | 2027-03-15 09:00 | 2027-03-15 10:00 |  | 2027-03-15 09:00 | 2027-03-15 10:00 | 1h | 111.88d | start no earlier than 2027-03-15 09:00 | Руководитель проекта [50%]; Бизнес-аналитик; Архитектор; Мобильный разработчик; Бэкенд-разработчик; Тестировщик | 5.5h | 5,150 |  |
| 75 | 6.10.7 | Совещание 7 | 1h | 2027-03-22 09:00 | 2027-03-22 10:00 |  | 2027-03-22 09:00 | 2027-03-22 10:00 | 1h | 106.88d | start no earlier than 2027-03-22 09:00 | Руководитель проекта [50%]; Бизнес-аналитик; Архитектор; Мобильный разработчик; Бэкенд-разработчик; Тестировщик | 5.5h | 5,150 |  |
| 76 | 6.10.8 | Совещание 8 | 1h | 2027-03-29 09:00 | 2027-03-29 10:00 |  | 2027-03-29 09:00 | 2027-03-29 10:00 | 1h | 101.88d | start no earlier than 2027-03-29 09:00 | Руководитель проекта [50%]; Бизнес-аналитик; Архитектор; Мобильный разработчик; Бэкенд-разработчик; Тестировщик | 5.5h | 5,150 |  |
| 77 | 6.10.9 | Совещание 9 | 1h | 2027-04-05 09:00 | 2027-04-05 10:00 |  | 2027-04-05 09:00 | 2027-04-05 10:00 | 1h | 96.88d | start no earlier than 2027-04-05 09:00 | Руководитель проекта [50%]; Бизнес-аналитик; Архитектор; Мобильный разработчик; Бэкенд-разработчик; Тестировщик | 5.5h | 5,150 |  |
| 78 | 6.10.10 | Совещание 10 | 1h | 2027-04-12 09:00 | 2027-04-12 10:00 |  | 2027-04-12 09:00 | 2027-04-12 10:00 | 1h | 91.88d | start no earlier than 2027-04-12 09:00 | Руководитель проекта [50%]; Бизнес-аналитик; Архитектор; Мобильный разработчик; Бэкенд-разработчик; Тестировщик | 5.5h | 5,150 |  |
| 79 | 6.10.11 | Совещание 11 | 1h | 2027-04-19 09:00 | 2027-04-19 10:00 |  | 2027-04-19 09:00 | 2027-04-19 10:00 | 1h | 86.88d | start no earlier than 2027-04-19 09:00 | Руководитель проекта [50%]; Бизнес-аналитик; Архитектор; Мобильный разработчик; Бэкенд-разработчик; Тестировщик | 5.5h | 5,150 |  |
| 80 | 6.10.12 | Совещание 12 | 1h | 2027-04-26 09:00 | 2027-04-26 10:00 |  | 2027-04-26 09:00 | 2027-04-26 10:00 | 1h | 81.88d | start no earlier than 2027-04-26 09:00 | Руководитель проекта [50%]; Бизнес-аналитик; Архитектор; Мобильный разработчик; Бэкенд-разработчик; Тестировщик | 5.5h | 5,150 |  |
| 81 | 6.10.13 | Совещание 13 | 1h | 2027-05-03 09:00 | 2027-05-03 10:00 |  | 2027-05-03 09:00 | 2027-05-03 10:00 | 1h | 76.88d | start no earlier than 2027-05-03 09:00 | Руководитель проекта [50%]; Бизнес-аналитик; Архитектор; Мобильный разработчик; Бэкенд-разработчик; Тестировщик | 5.5h | 5,150 |  |
| 82 | 6.10.14 | Совещание 14 | 1h | 2027-05-10 09:00 | 2027-05-10 10:00 |  | 2027-05-10 09:00 | 2027-05-10 10:00 | 1h | 71.88d | start no earlier than 2027-05-10 09:00 | Руководитель проекта [50%]; Бизнес-аналитик; Архитектор; Мобильный разработчик; Бэкенд-разработчик; Тестировщик | 5.5h | 5,150 |  |
| 83 | 6.10.15 | Совещание 15 | 1h | 2027-05-17 09:00 | 2027-05-17 10:00 |  | 2027-05-17 09:00 | 2027-05-17 10:00 | 1h | 66.88d | start no earlier than 2027-05-17 09:00 | Руководитель проекта [50%]; Бизнес-аналитик; Архитектор; Мобильный разработчик; Бэкенд-разработчик; Тестировщик | 5.5h | 5,150 |  |
| 84 | 6.10.16 | Совещание 16 | 1h | 2027-05-24 09:00 | 2027-05-24 10:00 |  | 2027-05-24 09:00 | 2027-05-24 10:00 | 1h | 61.88d | start no earlier than 2027-05-24 09:00 | Руководитель проекта [50%]; Бизнес-аналитик; Архитектор; Мобильный разработчик; Бэкенд-разработчик; Тестировщик | 5.5h | 5,150 |  |
| 85 | 6.10.17 | Совещание 17 | 1h | 2027-05-31 09:00 | 2027-05-31 10:00 |  | 2027-05-31 09:00 | 2027-05-31 10:00 | 1h | 56.88d | start no earlier than 2027-05-31 09:00 | Руководитель проекта [50%]; Бизнес-аналитик; Архитектор; Мобильный разработчик; Бэкенд-разработчик; Тестировщик | 5.5h | 5,150 |  |
| 86 | 6.10.18 | Совещание 18 | 1h | 2027-06-07 09:00 | 2027-06-07 10:00 |  | 2027-06-07 09:00 | 2027-06-07 10:00 | 1h | 51.88d | start no earlier than 2027-06-07 09:00 | Руководитель проекта [50%]; Бизнес-аналитик; Архитектор; Мобильный разработчик; Бэкенд-разработчик; Тестировщик | 5.5h | 5,150 |  |
| 87 | 6.10.19 | Совещание 19 | 1h | 2027-06-14 09:00 | 2027-06-14 10:00 |  | 2027-06-14 09:00 | 2027-06-14 10:00 | 1h | 46.88d | start no earlier than 2027-06-14 09:00 | Руководитель проекта [50%]; Бизнес-аналитик; Архитектор; Мобильный разработчик; Бэкенд-разработчик; Тестировщик | 5.5h | 5,150 |  |
| 88 | 6.10.20 | Совещание 20 | 1h | 2027-06-21 09:00 | 2027-06-21 10:00 |  | 2027-06-21 09:00 | 2027-06-21 10:00 | 1h | 41.88d | start no earlier than 2027-06-21 09:00 | Руководитель проекта [50%]; Бизнес-аналитик; Архитектор; Мобильный разработчик; Бэкенд-разработчик; Тестировщик | 5.5h | 5,150 |  |
| 89 | 6.10.21 | Совещание 21 | 1h | 2027-06-28 09:00 | 2027-06-28 10:00 |  | 2027-06-28 09:00 | 2027-06-28 10:00 | 1h | 36.88d | start no earlier than 2027-06-28 09:00 | Руководитель проекта [50%]; Бизнес-аналитик; Архитектор; Мобильный разработчик; Бэкенд-разработчик; Тестировщик | 5.5h | 5,150 |  |
| 90 | 6.10.22 | Совещание 22 | 1h | 2027-07-05 09:00 | 2027-07-05 10:00 |  | 2027-07-05 09:00 | 2027-07-05 10:00 | 1h | 31.88d | start no earlier than 2027-07-05 09:00 | Руководитель проекта [50%]; Бизнес-аналитик; Архитектор; Мобильный разработчик; Бэкенд-разработчик; Тестировщик | 5.5h | 5,150 |  |
| 91 | 6.10.23 | Совещание 23 | 1h | 2027-07-12 09:00 | 2027-07-12 10:00 |  | 2027-07-12 09:00 | 2027-07-12 10:00 | 1h | 26.88d | start no earlier than 2027-07-12 09:00 | Руководитель проекта [50%]; Бизнес-аналитик; Архитектор; Мобильный разработчик; Бэкенд-разработчик; Тестировщик | 5.5h | 5,150 |  |
| 92 | 6.10.24 | Совещание 24 | 1h | 2027-07-19 09:00 | 2027-07-19 10:00 |  | 2027-07-19 09:00 | 2027-07-19 10:00 | 1h | 21.88d | start no earlier than 2027-07-19 09:00 | Руководитель проекта [50%]; Бизнес-аналитик; Архитектор; Мобильный разработчик; Бэкенд-разработчик; Тестировщик | 5.5h | 5,150 |  |
| 93 | 6.10.25 | Совещание 25 | 1h | 2027-07-26 09:00 | 2027-07-26 10:00 |  | 2027-07-26 09:00 | 2027-07-26 10:00 | 1h | 16.88d | start no earlier than 2027-07-26 09:00 | Руководитель проекта [50%]; Бизнес-аналитик; Архитектор; Мобильный разработчик; Бэкенд-разработчик; Тестировщик | 5.5h | 5,150 |  |
| 94 | 6.10.26 | Совещание 26 | 1h | 2027-08-02 09:00 | 2027-08-02 10:00 |  | 2027-08-02 09:00 | 2027-08-02 10:00 | 1h | 11.88d | start no earlier than 2027-08-02 09:00 | Руководитель проекта [50%]; Бизнес-аналитик; Архитектор; Мобильный разработчик; Бэкенд-разработчик; Тестировщик | 5.5h | 5,150 |  |
| 95 | 6.10.27 | Совещание 27 | 1h | 2027-08-09 09:00 | 2027-08-09 10:00 |  | 2027-08-09 09:00 | 2027-08-09 10:00 | 1h | 6.88d | start no earlier than 2027-08-09 09:00 | Руководитель проекта [50%]; Бизнес-аналитик; Архитектор; Мобильный разработчик; Бэкенд-разработчик; Тестировщик | 5.5h | 5,150 |  |
| 96 | 6.10.28 | Совещание 28 | 1h | 2027-08-16 09:00 | 2027-08-16 10:00 |  | 2027-08-16 09:00 | 2027-08-16 10:00 | 1h | 1.88d | start no earlier than 2027-08-16 09:00 | Руководитель проекта [50%]; Бизнес-аналитик; Архитектор; Мобильный разработчик; Бэкенд-разработчик; Тестировщик | 5.5h | 5,150 |  |
| 97 | 6.11 | Закрытие проекта и архивирование | 2d | 2027-08-16 09:00 | 2027-08-17 18:00 | 67 | 2027-08-16 09:00 | 2027-08-17 18:00 | 2d | 0d |  | Руководитель проекта [50%]; Технический директор [30%] | 12.8h | 15,840 | 16,240 |
